# ErasmusNest GC04 · Planificación por sprints

Schedule from ProjectLibre, 2026-10-21 to 2026-12-01.

## Calendars

- ErasmusNest (lunes a viernes)[Imported]: Mon-Fri 08:00-12:00, 13:00-17:00; Sat-Sun off.

## Resources

| Resource | Group | Rate | Notes |
| --- | --- | --- | --- |
| No Asignado |  |  |  |
| Hugo | Product Owner | 35 | Product Owner · 5 h/semana nominales (MaxUnits 12,5 % de 40 h) · tarifa 35 €/h acordada el 14/10/2026 |
| Gled | Tech Lead | 40 | Tech Lead · 5 h/semana nominales (MaxUnits 12,5 % de 40 h) · tarifa 40 €/h acordada el 14/10/2026 |
| José | Scrum Master | 32 | Scrum Master · 5 h/semana nominales (MaxUnits 12,5 % de 40 h) · tarifa 32 €/h acordada el 14/10/2026 |

## Schedule

| ID | WBS | Task | Type | Duration | Start | Finish | Predecessors | Baseline start | Baseline finish | Constraint | Resources |
| --- | --- | --- | --- | --- | --- | --- | --- | --- | --- | --- | --- |
| 1 | 1 | **IT-001 · R1** |  | 5d | 2026-10-21 | 2026-10-27 |  | 2026-10-21 | 2026-10-27 |  |  |
| 2 | 1.1 | MGT IT-001 Sprint planning y refinamiento |  | 5d | 2026-10-21 | 2026-10-27 |  | 2026-10-21 | 2026-10-27 | start no earlier than 2026-10-21 | Hugo [1.88%]; Gled [1.88%]; José [1.88%] |
| 3 | 1.2 | US-001 Registrar cuenta con correo institucional |  | 5d | 2026-10-21 | 2026-10-27 |  | 2026-10-21 | 2026-10-27 | start no earlier than 2026-10-21 | Hugo [3.75%]; Gled [5.25%]; José [3.5%] |
| 4 | 1.3 | US-002 Verificar la cuenta mediante el correo institucional (parte 1 de 2) |  | 5d | 2026-10-21 | 2026-10-27 | 3SS | 2026-10-21 | 2026-10-27 | start no earlier than 2026-10-21 | Hugo [2%]; José [2.5%] |
| 5 | 1.4 | MGT IT-001 Daily asíncrona |  | 5d | 2026-10-21 | 2026-10-27 |  | 2026-10-21 | 2026-10-27 | start no earlier than 2026-10-21 | Hugo [1%]; Gled [1%]; José [1%] |
| 6 | 1.5 | MGT IT-001 Sprint review y retrospectiva |  | 5d | 2026-10-21 | 2026-10-27 |  | 2026-10-21 | 2026-10-27 | start no earlier than 2026-10-21 | Hugo [1.05%]; Gled [1.05%]; José [1.05%] |
| 7 | 1.6 | MGT IT-001 Coordinación del rol |  | 5d | 2026-10-21 | 2026-10-27 |  | 2026-10-21 | 2026-10-27 | start no earlier than 2026-10-21 | Hugo [1.25%]; Gled [1.25%]; José [1.88%] |
| 8 | 2 | **IT-002 · R1** |  | 5d | 2026-10-28 | 2026-11-03 |  | 2026-10-28 | 2026-11-03 |  |  |
| 9 | 2.1 | MGT IT-002 Sprint planning y refinamiento |  | 5d | 2026-10-28 | 2026-11-03 |  | 2026-10-28 | 2026-11-03 | start no earlier than 2026-10-28 | Hugo [1.88%]; Gled [1.88%]; José [1.88%] |
| 10 | 2.2 | US-002 Verificar la cuenta mediante el correo institucional (parte 2 de 2) |  | 5d | 2026-10-28 | 2026-11-03 | 4 | 2026-10-28 | 2026-11-03 | start no earlier than 2026-10-28 | Hugo [1.5%]; Gled [4%]; José [2.5%] |
| 11 | 2.3 | US-003 Iniciar y cerrar sesión |  | 5d | 2026-10-28 | 2026-11-03 | 3 | 2026-10-28 | 2026-11-03 | start no earlier than 2026-10-28 | Hugo [3.75%]; Gled [0.75%]; José [3%] |
| 12 | 2.4 | MGT IT-002 Daily asíncrona |  | 5d | 2026-10-28 | 2026-11-03 |  | 2026-10-28 | 2026-11-03 | start no earlier than 2026-10-28 | Hugo [1%]; Gled [1%]; José [1%] |
| 13 | 2.5 | MGT IT-002 Sprint review y retrospectiva |  | 5d | 2026-10-28 | 2026-11-03 |  | 2026-10-28 | 2026-11-03 | start no earlier than 2026-10-28 | Hugo [1.05%]; Gled [1.05%]; José [1.05%] |
| 14 | 2.6 | MGT IT-002 Coordinación del rol |  | 5d | 2026-10-28 | 2026-11-03 |  | 2026-10-28 | 2026-11-03 | start no earlier than 2026-10-28 | Hugo [1.25%]; Gled [1.25%]; José [1.88%] |
| 15 | 2.7 | Hito R1 · Release 1 entregada | milestone | 0d | 2026-11-03 | 2026-11-03 | 10, 11 | 2026-11-03 | 2026-11-03 |  |  |
| 16 | 3 | **IT-003 · R2** |  | 5d | 2026-11-04 | 2026-11-10 |  | 2026-11-04 | 2026-11-10 |  |  |
| 17 | 3.1 | MGT IT-003 Sprint planning y refinamiento |  | 5d | 2026-11-04 | 2026-11-10 |  | 2026-11-04 | 2026-11-10 | start no earlier than 2026-11-04 | Hugo [1.88%]; Gled [1.88%]; José [1.88%] |
| 18 | 3.2 | US-006 Publicar el anuncio de mi habitación (parte 1 de 2) |  | 5d | 2026-11-04 | 2026-11-10 | 10, 11 | 2026-11-04 | 2026-11-10 | start no earlier than 2026-11-04 | Hugo [2%]; Gled [1.5%]; José [6%] |
| 19 | 3.3 | MGT IT-003 Daily asíncrona |  | 5d | 2026-11-04 | 2026-11-10 |  | 2026-11-04 | 2026-11-10 | start no earlier than 2026-11-04 | Hugo [1%]; Gled [1%]; José [1%] |
| 20 | 3.4 | MGT IT-003 Sprint review y retrospectiva |  | 5d | 2026-11-04 | 2026-11-10 |  | 2026-11-04 | 2026-11-10 | start no earlier than 2026-11-04 | Hugo [1.05%]; Gled [1.05%]; José [1.05%] |
| 21 | 3.5 | MGT IT-003 Coordinación del rol |  | 5d | 2026-11-04 | 2026-11-10 |  | 2026-11-04 | 2026-11-10 | start no earlier than 2026-11-04 | Hugo [1.25%]; Gled [1.25%]; José [1.88%] |
| 22 | 4 | **IT-004 · R2** |  | 5d | 2026-11-11 | 2026-11-17 |  | 2026-11-11 | 2026-11-17 |  |  |
| 23 | 4.1 | MGT IT-004 Sprint planning y refinamiento |  | 5d | 2026-11-11 | 2026-11-17 |  | 2026-11-11 | 2026-11-17 | start no earlier than 2026-11-11 | Hugo [1.88%]; Gled [1.88%]; José [1.88%] |
| 24 | 4.2 | US-006 Publicar el anuncio de mi habitación (parte 2 de 2) |  | 5d | 2026-11-11 | 2026-11-17 | 18 | 2026-11-11 | 2026-11-17 | start no earlier than 2026-11-11 | Hugo [1%]; Gled [2%] |
| 25 | 4.3 | US-012 Listar los anuncios disponibles |  | 5d | 2026-11-11 | 2026-11-17 | 24SS | 2026-11-11 | 2026-11-17 | start no earlier than 2026-11-11 | Hugo [4%]; Gled [2%]; José [1.5%] |
| 26 | 4.4 | MGT IT-004 Daily asíncrona |  | 5d | 2026-11-11 | 2026-11-17 |  | 2026-11-11 | 2026-11-17 | start no earlier than 2026-11-11 | Hugo [1%]; Gled [1%]; José [1%] |
| 27 | 4.5 | MGT IT-004 Sprint review y retrospectiva |  | 5d | 2026-11-11 | 2026-11-17 |  | 2026-11-11 | 2026-11-17 | start no earlier than 2026-11-11 | Hugo [1.05%]; Gled [1.05%]; José [1.05%] |
| 28 | 4.6 | MGT IT-004 Coordinación del rol |  | 5d | 2026-11-11 | 2026-11-17 |  | 2026-11-11 | 2026-11-17 | start no earlier than 2026-11-11 | Hugo [1.25%]; Gled [1.25%]; José [1.88%] |
| 29 | 4.7 | Hito R2 · Release 2 entregada | milestone | 0d | 2026-11-17 | 2026-11-17 | 24, 25 | 2026-11-17 | 2026-11-17 |  |  |

Notes:
- 2: Planning 30 min + refinamiento 15 min (team charter, acuerdo 4)
- 3: US-001 · EP-001 · IT-001 · estimación total de la historia 5 h-p (Planning Poker). Horas por persona e iteración de la hoja Planificación (excel-export-v02).
- 4: US-002 · EP-001 · IT-001 · estimación total de la historia 5 h-p (Planning Poker). Horas por persona e iteración de la hoja Planificación (excel-export-v02).
- 5: ≈5 min × 5 días por WhatsApp (acuerdo 5)
- 6: Review 20 min + retro 20–30 min cada 2 semanas, prorrateado ≈25 min/semana (acuerdo 6)
- 7: Coordinación propia de PO, TL y SM (hoja Capacidad)
- 9: Planning 30 min + refinamiento 15 min (team charter, acuerdo 4)
- 10: US-002 · EP-001 · IT-002 · estimación total de la historia 5 h-p (Planning Poker). Horas por persona e iteración de la hoja Planificación (excel-export-v02).
- 11: US-003 · EP-001 · IT-002 · estimación total de la historia 3 h-p (Planning Poker). Horas por persona e iteración de la hoja Planificación (excel-export-v02).
- 12: ≈5 min × 5 días por WhatsApp (acuerdo 5)
- 13: Review 20 min + retro 20–30 min cada 2 semanas, prorrateado ≈25 min/semana (acuerdo 6)
- 14: Coordinación propia de PO, TL y SM (hoja Capacidad)
- 17: Planning 30 min + refinamiento 15 min (team charter, acuerdo 4)
- 18: US-006 · EP-002 · IT-003 · estimación total de la historia 5 h-p (Planning Poker). Horas por persona e iteración de la hoja Planificación (excel-export-v02).
- 19: ≈5 min × 5 días por WhatsApp (acuerdo 5)
- 20: Review 20 min + retro 20–30 min cada 2 semanas, prorrateado ≈25 min/semana (acuerdo 6)
- 21: Coordinación propia de PO, TL y SM (hoja Capacidad)
- 23: Planning 30 min + refinamiento 15 min (team charter, acuerdo 4)
- 24: US-006 · EP-002 · IT-004 · estimación total de la historia 5 h-p (Planning Poker). Horas por persona e iteración de la hoja Planificación (excel-export-v02).
- 25: US-012 · EP-003 · IT-004 · estimación total de la historia 3 h-p (Planning Poker). Horas por persona e iteración de la hoja Planificación (excel-export-v02).
- 26: ≈5 min × 5 días por WhatsApp (acuerdo 5)
- 27: Review 20 min + retro 20–30 min cada 2 semanas, prorrateado ≈25 min/semana (acuerdo 6)
- 28: Coordinación propia de PO, TL y SM (hoja Capacidad)

| ID | WBS | Task | Type | Duration | Start | Finish | Predecessors | Baseline start | Baseline finish | Constraint | Resources |
| --- | --- | --- | --- | --- | --- | --- | --- | --- | --- | --- | --- |
| 30 | 5 | **IT-005 · R3** |  | 5d | 2026-11-18 | 2026-11-24 |  | 2026-11-18 | 2026-11-24 |  |  |
| 31 | 5.1 | MGT IT-005 Sprint planning y refinamiento |  | 5d | 2026-11-18 | 2026-11-24 |  | 2026-11-18 | 2026-11-24 | start no earlier than 2026-11-18 | Hugo [1.88%]; Gled [1.88%]; José [1.88%] |
| 32 | 5.2 | US-015 Ver el detalle de un anuncio con su estado |  | 5d | 2026-11-18 | 2026-11-24 | 25 | 2026-11-18 | 2026-11-24 | start no earlier than 2026-11-18 | Hugo [2.5%]; Gled [1.5%]; José [3.5%] |
| 33 | 5.3 | US-017 Contactar con el oferente desde un anuncio (parte 1 de 2) |  | 5d | 2026-11-18 | 2026-11-24 | 32SS, 10 | 2026-11-18 | 2026-11-24 | start no earlier than 2026-11-18 | Hugo [0.75%]; Gled [3.75%]; José [2.5%] |
| 34 | 5.4 | MGT IT-005 Daily asíncrona |  | 5d | 2026-11-18 | 2026-11-24 |  | 2026-11-18 | 2026-11-24 | start no earlier than 2026-11-18 | Hugo [1%]; Gled [1%]; José [1%] |
| 35 | 5.5 | MGT IT-005 Sprint review y retrospectiva |  | 5d | 2026-11-18 | 2026-11-24 |  | 2026-11-18 | 2026-11-24 | start no earlier than 2026-11-18 | Hugo [1.05%]; Gled [1.05%]; José [1.05%] |
| 36 | 5.6 | MGT IT-005 Coordinación del rol |  | 5d | 2026-11-18 | 2026-11-24 |  | 2026-11-18 | 2026-11-24 | start no earlier than 2026-11-18 | Hugo [1.25%]; Gled [1.25%]; José [1.88%] |
| 37 | 6 | **IT-006 · R3** |  | 5d | 2026-11-25 | 2026-12-01 |  | 2026-11-25 | 2026-12-01 |  |  |
| 38 | 6.1 | MGT IT-006 Sprint planning y refinamiento |  | 5d | 2026-11-25 | 2026-12-01 |  | 2026-11-25 | 2026-12-01 | start no earlier than 2026-11-25 | Hugo [1.88%]; Gled [1.88%]; José [1.88%] |
| 39 | 6.2 | US-017 Contactar con el oferente desde un anuncio (parte 2 de 2) |  | 5d | 2026-11-25 | 2026-12-01 | 33 | 2026-11-25 | 2026-12-01 | start no earlier than 2026-11-25 | Gled [2.75%]; José [2.75%] |
| 40 | 6.3 | US-023 Guion de instalación y evaluación |  | 5d | 2026-11-25 | 2026-12-01 | 39SS | 2026-11-25 | 2026-12-01 | start no earlier than 2026-11-25 | Hugo [5%]; José [2.5%] |
| 41 | 6.4 | MGT IT-006 Daily asíncrona |  | 5d | 2026-11-25 | 2026-12-01 |  | 2026-11-25 | 2026-12-01 | start no earlier than 2026-11-25 | Hugo [1%]; Gled [1%]; José [1%] |
| 42 | 6.5 | MGT IT-006 Sprint review y retrospectiva |  | 5d | 2026-11-25 | 2026-12-01 |  | 2026-11-25 | 2026-12-01 | start no earlier than 2026-11-25 | Hugo [1.05%]; Gled [1.05%]; José [1.05%] |
| 43 | 6.6 | MGT IT-006 Coordinación del rol |  | 5d | 2026-11-25 | 2026-12-01 |  | 2026-11-25 | 2026-12-01 | start no earlier than 2026-11-25 | Hugo [1.25%]; Gled [1.25%]; José [1.88%] |
| 44 | 6.7 | Hito R3 · Release 3 entregada (fin del proyecto) | milestone | 0d | 2026-12-01 | 2026-12-01 | 39, 40 | 2026-12-01 | 2026-12-01 |  |  |

Notes:
- 31: Planning 30 min + refinamiento 15 min (team charter, acuerdo 4)
- 32: US-015 · EP-003 · IT-005 · estimación total de la historia 3 h-p (Planning Poker). Horas por persona e iteración de la hoja Planificación (excel-export-v02).
- 33: US-017 · EP-004 · IT-005 · estimación total de la historia 5 h-p (Planning Poker). Horas por persona e iteración de la hoja Planificación (excel-export-v02).
- 34: ≈5 min × 5 días por WhatsApp (acuerdo 5)
- 35: Review 20 min + retro 20–30 min cada 2 semanas, prorrateado ≈25 min/semana (acuerdo 6)
- 36: Coordinación propia de PO, TL y SM (hoja Capacidad)
- 38: Planning 30 min + refinamiento 15 min (team charter, acuerdo 4)
- 39: US-017 · EP-004 · IT-006 · estimación total de la historia 5 h-p (Planning Poker). Horas por persona e iteración de la hoja Planificación (excel-export-v02).
- 40: US-023 · EP-005 · IT-006 · estimación total de la historia 3 h-p (Planning Poker). Horas por persona e iteración de la hoja Planificación (excel-export-v02).
- 41: ≈5 min × 5 días por WhatsApp (acuerdo 5)
- 42: Review 20 min + retro 20–30 min cada 2 semanas, prorrateado ≈25 min/semana (acuerdo 6)
- 43: Coordinación propia de PO, TL y SM (hoja Capacidad)
